Schedule from MS Project, 2016-12-01 to 2018-01-31.

## Calendars

- Standard: Mon-Fri 08:00-12:00, 13:00-17:00; Sat-Sun off.

## Schedule

| ID | WBS | Task | Duration | Start | Finish | Predecessors | Total slack | Free slack |
| --- | --- | --- | --- | --- | --- | --- | --- | --- |
| 1 | 503703186 | **Anbindung von Fremdmaschinen in das Uhlmann SCADA System** | 305d | 2016-12-01 | 2018-01-31 |  |  |  |
| 2 | 503703186.1 | **Projektmanagement** | 301d | 2016-12-01 | 2018-01-25 |  |  |  |
| 3 | 503703186.1.1 | Projektleitung | 300d | 2016-12-01 | 2018-01-24 |  | 1d |  |
| 4 | 503703186.1.2 | Steuerung | 300d | 2016-12-01 | 2018-01-24 |  | 1d |  |
| 5 | 503703186.1.3 | Änderungsmanagement | 300d | 2016-12-01 | 2018-01-24 |  | 1d |  |
| 6 | 503703186.1.4 | Qualitätsmanagement | 300d | 2016-12-01 | 2018-01-24 |  | 1d |  |
| 7 | 503703186.4 | **Definition** | 64d | 2016-12-01 | 2017-02-28 |  |  |  |
| 8 | 503703186.4.1 | Definition schreiben | 50d | 2016-12-01 | 2017-02-08 |  | 0d |  |
| 9 | 503703186.4.2 | Definition prüfen | 14d | 2017-02-09 | 2017-02-28 | 8 | 0d |  |
| 10 | 503703186.2 | **Entwicklung** | 129d | 2017-03-01 | 2017-08-28 | 7 |  |  |
| 11 | 503703186.2.1 | Aufbau Testsystem | 10d | 2017-03-01 | 2017-03-14 |  | 64d | 20d |
| 12 | 503703186.2.2 | Ausarbeitung Softwarearchitektur | 30d | 2017-03-01 | 2017-04-11 |  | 44d | 0d |
| 13 | 503703186.2.3 | Entwicklung | 50d | 2017-04-12 | 2017-06-20 | 11, 12 | 44d | 0d |
| 14 | 503703186.2.4 | Interne Abnahme | 5d | 2017-06-21 | 2017-06-27 | 13 | 44d |  |
| 15 | 503703186.2.5 | Dokumentation | 100d | 2017-03-01 | 2017-07-18 |  | 29d |  |
| 16 | 503703186.3 | **Maschinenintegration** | 23d | 2017-08-29 | 2017-09-28 | 10 |  |  |
| 17 | 503703186.3.1 | Integration Fremdmaschine | 10d | 2017-08-29 | 2017-09-11 |  | 11d | 0d |
| 18 | 503703186.3.2 | Schnittstellentest | 1d | 2017-09-12 | 2017-09-12 | 17 | 11d | 0d |
| 19 | 503703186.3.3 | 1h Testlauf | 1d | 2017-09-13 | 2017-09-13 | 18 | 11d |  |
| 20 | 503703186.5 | **Testläufe** | 42d | 2017-09-29 | 2017-11-27 | 16 |  |  |
| 21 | 503703186.5.1 | Testlauf 1 | 10d | 2017-09-29 | 2017-10-12 |  | 32d |  |
| 22 | 503703186.5.2 | Testlauf 2 | 10d | 2017-09-29 | 2017-10-12 |  | 32d |  |
| 23 | 503703186.5.3 | Testlauf 3 | 10d | 2017-09-29 | 2017-10-12 |  | 32d |  |
| 24 | 503703186.5.4 | Testlauf 4 | 10d | 2017-09-29 | 2017-10-12 |  | 32d |  |

| ID | WBS | Task | Duration | Start | Finish | Predecessors | Total slack | Free slack |
| --- | --- | --- | --- | --- | --- | --- | --- | --- |
| 25 | 503703186.6 | **Abnahme** | 14d | 2017-11-28 | 2017-12-15 | 20 |  |  |
| 26 | 503703186.6.1 | Abnahme-Testlauf 1 | 2d | 2017-11-28 | 2017-11-29 |  | 12d |  |
| 27 | 503703186.6.2 | Abnahme-Testlauf 2 | 2d | 2017-11-28 | 2017-11-29 |  | 12d |  |
| 28 | 503703186.6.3 | Abnahme-Testlauf 3 | 2d | 2017-11-28 | 2017-11-29 |  | 12d |  |
| 29 | 503703186.6.4 | Abnahme-Testlauf 4 | 2d | 2017-11-28 | 2017-11-29 |  | 12d |  |
| 30 | 503703186.6.5 | Abnahme-Schnittstelle | 1d | 2017-11-28 | 2017-11-28 |  | 13d |  |
| 31 | 503703186.6.6 | Abnahme-Bedienung Maschine | 2d | 2017-11-28 | 2017-11-29 |  | 12d |  |
| 32 | 503703186.6.7 | Abnahmeprotokoll Erstellung und Unterschrift | 2d | 2017-11-28 | 2017-11-29 |  | 12d |  |
| 33 | 503703186.7 | **Auslieferung** | 30d | 2017-12-18 | 2018-01-26 | 25 |  |  |
| 34 | 503703186.7.1 | Versanddokumentation | 5d | 2017-12-18 | 2017-12-22 |  | 1d | 0d |
| 35 | 503703186.7.2 | Versand vom Equipment | 24d | 2017-12-25 | 2018-01-25 | 34 | 1d |  |
